# UJD_VN_Project_Schedule

Schedule from MS Project, 2014-05-12 to 2014-08-27.

## Calendars

- Standard: Mon-Fri 08:00-12:00, 13:00-17:00; Sat-Sun off.

## Resources

| Resource |
| --- |
| Project Team |
| NamLD |
| MinhPT |
| DatPT |
| TuanNN |

## Schedule

| ID | WBS | Task | Type | Duration | Start | Finish | Predecessors | Total slack | Resources | Work |
| --- | --- | --- | --- | --- | --- | --- | --- | --- | --- | --- |
| 1 | 1 | **UJD_VN** |  | 78d | 2014-05-12 | 2014-08-27 |  |  |  | 1978h |
| 2 | 1.1 | **Initiation** |  | 15d | 2014-05-12 | 2014-05-30 |  | 0d |  | 394h |
| 3 | 1.1.1 | Develop project Idea | manual | 1d | 2014-05-12 | 2014-05-12 |  |  | Project Team | 8h |
| 4 | 1.1.2 | Prepare project | manual | 0.5d | 2014-05-13 | 2014-05-13 | 3 |  | Project Team | 4h |
| 5 | 1.1.3 | **Develop report no.1: Introduction** |  | 5d | 2014-05-13 | 2014-05-19 |  |  |  | 48h |
| 6 | 1.1.3.1 | System feasible study | manual | 1d | 2014-05-13 | 2014-05-13 | 3 |  | Project Team | 8h |
| 7 | 1.1.3.2 | Define business situation | manual | 1d | 2014-05-13 | 2014-05-13 | 3 |  | Project Team | 8h |
| 8 | 1.1.3.3 | Define project and system scope | manual | 1d | 2014-05-14 | 2014-05-14 | 6, 7 |  | Project Team | 8h |
| 9 | 1.1.3.4 | Review & update report no.1 : Draft vesion | manual | 0.5d | 2014-05-15 | 2014-05-15 | 8 |  | NamLD | 4h |
| 10 | 1.1.3.5 | Submit report no.1 first version | manual | 0.5d | 2014-05-15 | 2014-05-15 | 9 |  | NamLD | 4h |
| 11 | 1.1.3.6 | Revise after got comments for report no.1 | manual | 1d | 2014-05-16 | 2014-05-16 | 10 |  | NamLD | 8h |
| 12 | 1.1.3.7 | Submit report no.1 final version | manual | 1d | 2014-05-19 | 2014-05-19 | 11 |  | NamLD | 8h |
| 13 | 1.1.4 | Kick-off meeting | manual | 0.25d | 2014-05-20 | 2014-05-20 | 12 |  | Project Team | 2h |
| 14 | 1.1.5 | Q & A Management | manual | 0.5d | 2014-05-20 | 2014-05-20 | 13 |  | TuanNN | 4h |
| 15 | 1.1.6 | **Technologies** |  | 9d | 2014-05-15 | 2014-05-27 |  |  |  | 132h |
| 16 | 1.1.6.1 | Research development technology | manual | 2d | 2014-05-15 | 2014-05-16 | 8 |  | DatPT; NamLD | 32h |
| 17 | 1.1.6.2 | Install and configuration PHP with Xampp | manual | 0.5d | 2014-05-19 | 2014-05-19 | 16 |  | NamLD | 4h |
| 18 | 1.1.6.3 | Study Xampp and MYSQL | manual | 6d | 2014-05-19 | 2014-05-27 | 17 |  | DatPT; NamLD | 96h |
| 19 | 1.1.7 | **Requirements** |  | 9d | 2014-05-20 | 2014-05-30 |  |  |  | 144h |
| 20 | 1.1.7.1 | Collect business requirements and processes | manual | 1d | 2014-05-20 | 2014-05-20 | 12 |  | MinhPT; NamLD | 16h |
| 21 | 1.1.7.2 | Create draft screen prototypes | manual | 6d | 2014-05-21 | 2014-05-28 | 20 |  | DatPT; TuanNN | 96h |
| 22 | 1.1.7.3 | Complete first screen prototypes | milestone, manual | 0d | 2014-05-29 | 2014-05-29 | 21 |  | DatPT; TuanNN |  |
| 23 | 1.1.7.4 | Review and edit sceen prototypes | manual | 2d | 2014-05-29 | 2014-05-30 | 22 |  | DatPT; TuanNN | 32h |
| 24 | 1.1.8 | **Develop Project Plan** |  | 9d | 2014-05-20 | 2014-05-30 |  |  |  | 52h |
| 25 | 1.1.8.1 | Develop project definition | manual | 1d | 2014-05-20 | 2014-05-21 | 13 |  | NamLD | 8h |
| 26 | 1.1.8.2 | Work BreakDown Structure | manual | 0.5d | 2014-05-22 | 2014-05-22 | 25 |  | NamLD | 4h |
| 27 | 1.1.8.3 | Create project schedule | manual | 1d | 2014-05-23 | 2014-05-23 | 26 |  | NamLD | 8h |

| ID | WBS | Task | Type | Duration | Start | Finish | Predecessors | Resources | Work |
| --- | --- | --- | --- | --- | --- | --- | --- | --- | --- |
| 28 | 1.1.8.4 | **Develop report no.2: Project management Plan** |  | 6d | 2014-05-24 | 2014-05-30 |  |  | 32h |
| 29 | 1.1.8.4.1 | Create Project plan first version | manual | 2d | 2014-05-24 | 2014-05-26 | 27 | NamLD | 16h |
| 30 | 1.1.8.4.2 | Submit report no.2 first version | milestone, manual | 0d | 2014-05-27 | 2014-05-27 | 29 | NamLD |  |
| 31 | 1.1.8.4.3 | Revise after got comments for report no.2 | manual | 2d | 2014-05-28 | 2014-05-29 | 30 | NamLD | 16h |
| 32 | 1.1.8.4.4 | Submit report no.2 final version | milestone, manual | 0d | 2014-05-30 | 2014-05-30 | 31 | NamLD |  |
| 33 | 1.2 | **Solution** |  | 22d | 2014-06-02 | 2014-07-01 |  |  | 624h |
| 34 | 1.2.1 | **Project Management** |  | 3d | 2014-06-02 | 2014-06-04 |  |  | 16h |
| 35 | 1.2.1.1 | Refine project plan | manual | 2d | 2014-06-02 | 2014-06-03 | 32 | NamLD | 16h |
| 36 | 1.2.2 | **Technologies** |  | 7d | 2014-06-02 | 2014-06-10 |  |  | 112h |
| 37 | 1.2.2.1 | Design database models | manual | 1d | 2014-06-02 | 2014-06-02 | 32 | DatPT; NamLD | 16h |
| 38 | 1.2.2.2 | Coding prototypes | manual | 6d | 2014-06-03 | 2014-06-10 | 37 | DatPT; NamLD | 96h |
| 39 | 1.2.3 | **User Requirements Specification** |  | 5d | 2014-06-02 | 2014-06-06 |  |  | 80h |
| 40 | 1.2.3.1 | Create draft requirements | manual | 2d | 2014-06-02 | 2014-06-03 | 32 | MinhPT; NamLD | 32h |
| 41 | 1.2.3.2 | Complete draft requirements | milestone, manual | 0d | 2014-06-04 | 2014-06-04 | 40 | MinhPT; TuanNN |  |
| 42 | 1.2.3.3 | Develop Use-case model | manual | 1d | 2014-06-04 | 2014-06-04 | 41 | MinhPT; TuanNN | 16h |
| 43 | 1.2.3.4 | Develop main functions and processes | manual | 2d | 2014-06-05 | 2014-06-06 | 42 | DatPT; NamLD | 32h |
| 44 | 1.2.4 | **Software Requirements Specification** |  | 12d | 2014-06-09 | 2014-06-24 |  |  | 164h |
| 45 | 1.2.4.1 | **Functional Requirement Specification** |  | 8d | 2014-06-09 | 2014-06-18 |  |  | 124h |
| 46 | 1.2.4.1.1 | **Phase 1** |  | 6d | 2014-06-09 | 2014-06-14 |  |  | 88h |
| 47 | 1.2.4.1.1.1 | Homepage Module | manual | 1d | 2014-06-09 | 2014-06-09 | 39 | NamLD; DatPT | 16h |
| 48 | 1.2.4.1.1.2 | **Admin Module** |  | 4d | 2014-06-10 | 2014-06-13 |  |  | 28h |
| 49 | 1.2.4.1.1.2.1 | Admin Manage Account Module | manual | 0.5d | 2014-06-10 | 2014-06-10 | 47 | NamLD | 4h |
| 50 | 1.2.4.1.1.2.2 | Member's account management Module | manual | 0.5d | 2014-06-10 | 2014-06-10 | 49 | NamLD | 4h |
| 51 | 1.2.4.1.1.2.3 | Contribute Opinion, Database Management Module | manual | 1d | 2014-06-11 | 2014-06-11 | 50 | NamLD | 8h |
| 52 | 1.2.4.1.1.2.4 | Data Management Module | manual | 1.5d | 2014-06-12 | 2014-06-13 | 51 | NamLD | 12h |

| ID | WBS | Task | Type | Duration | Start | Finish | Predecessors | Resources | Work |
| --- | --- | --- | --- | --- | --- | --- | --- | --- | --- |
| 53 | 1.2.4.1.1.3 | **Search Module** |  | 3d | 2014-06-10 | 2014-06-12 |  |  | 20h |
| 54 | 1.2.4.1.1.3.1 | Search Sentences Module | manual | 0.5d | 2014-06-10 | 2014-06-10 | 47 | DatPT | 4h |
| 55 | 1.2.4.1.1.3.2 | Search Conversation Module | manual | 0.5d | 2014-06-10 | 2014-06-10 | 54 | DatPT | 4h |
| 56 | 1.2.4.1.1.3.3 | Search Video Module | manual | 0.5d | 2014-06-11 | 2014-06-11 | 55 | DatPT | 4h |
| 57 | 1.2.4.1.1.3.4 | Search Grammar Module | manual | 0.5d | 2014-06-11 | 2014-06-11 | 56 | DatPT | 4h |
| 58 | 1.2.4.1.1.3.5 | Search Specialized Japanese Module | manual | 0.5d | 2014-06-12 | 2014-06-12 | 57 | DatPT | 4h |
| 59 | 1.2.4.1.1.4 | Login/Logout Module | manual | 1d | 2014-06-12 | 2014-06-13 | 58 | DatPT | 8h |
| 60 | 1.2.4.1.1.5 | Register Account Module | manual | 1d | 2014-06-13 | 2014-06-14 | 59 | DatPT | 8h |
| 61 | 1.2.4.1.1.6 | Contribute Opinion, Database Module | manual | 1d | 2014-06-13 | 2014-06-14 | 52 | NamLD | 8h |
| 62 | 1.2.4.1.2 | **Phase 2** |  | 3d | 2014-06-16 | 2014-06-18 |  |  | 36h |
| 63 | 1.2.4.1.2.1 | Change Password Module | manual | 1d | 2014-06-16 | 2014-06-16 | 61 | NamLD | 8h |
| 64 | 1.2.4.1.2.2 | Forgot Password Module | manual | 0.5d | 2014-06-17 | 2014-06-17 | 63 | NamLD | 4h |
| 65 | 1.2.4.1.2.3 | Reading Document Module | manual | 1d | 2014-06-16 | 2014-06-16 | 60 | DatPT | 8h |
| 66 | 1.2.4.1.2.4 | Training Listening Module | manual | 0.5d | 2014-06-17 | 2014-06-17 | 65 | DatPT | 4h |
| 67 | 1.2.4.1.2.5 | Listening Conversation Module | manual | 0.5d | 2014-06-17 | 2014-06-17 | 66 | DatPT | 4h |
| 68 | 1.2.4.1.2.6 | Doing Test Module | manual | 1d | 2014-06-18 | 2014-06-18 | 67 | DatPT | 8h |
| 69 | 1.2.4.2 | **Non-functional Requirements Specification** |  | 4d | 2014-06-19 | 2014-06-24 |  |  | 16h |
| 70 | 1.2.4.2.1 | Develop User Interface requirements | manual | 1d | 2014-06-19 | 2014-06-19 | 45 | MinhPT | 8h |
| 71 | 1.2.4.2.2 | Develop Performance requirements | manual | 1d | 2014-06-20 | 2014-06-20 | 70 | TuanNN | 8h |
| 72 | 1.2.4.3 | Submit report no.3 First version | milestone, manual | 0d | 2014-06-21 | 2014-06-21 | 71 | NamLD |  |
| 73 | 1.2.4.4 | Revise after got comments of Report no.3 | manual | 1d | 2014-06-23 | 2014-06-23 | 72 | NamLD; MinhPT; TuanNN | 24h |
| 74 | 1.2.4.5 | Submit report no.3 final version | milestone, manual | 0d | 2014-06-24 | 2014-06-24 | 73 | NamLD |  |
| 75 | 1.2.5 | **Design** |  | 17d | 2014-06-09 | 2014-07-01 |  |  | 252h |
| 76 | 1.2.5.1 | Create Design Overview | manual | 1d | 2014-06-09 | 2014-06-09 | 39 | NamLD | 8h |

| ID | WBS | Task | Type | Duration | Start | Finish | Predecessors | Resources | Work |
| --- | --- | --- | --- | --- | --- | --- | --- | --- | --- |
| 77 | 1.2.5.2 | **System Architectural Design** |  | 4d | 2014-06-09 | 2014-06-12 | 39 |  | 44h |
| 78 | 1.2.5.2.1 | Define the system structure and collect system features | manual | 1d | 2014-06-09 | 2014-06-09 |  | DatPT; NamLD | 16h |
| 79 | 1.2.5.2.2 | Study the common System Architeture | manual | 1d | 2014-06-10 | 2014-06-10 | 78 | DatPT; NamLD | 16h |
| 80 | 1.2.5.2.3 | Choice of System Architeture | manual | 0.5d | 2014-06-11 | 2014-06-11 | 79 | NamLD | 4h |
| 81 | 1.2.5.2.4 | Discussion of Alternative Design | manual | 1d | 2014-06-11 | 2014-06-12 | 80 | DatPT | 8h |
| 82 | 1.2.5.3 | **Detailed Design** |  | 16d | 2014-06-09 | 2014-06-30 |  |  | 192h |
| 83 | 1.2.5.3.1 | **Component Diagram** |  | 3d | 2014-06-09 | 2014-06-11 |  |  | 40h |
| 84 | 1.2.5.3.1.1 | Define the component | manual | 1d | 2014-06-09 | 2014-06-09 | 39 | DatPT; NamLD | 16h |
| 85 | 1.2.5.3.1.2 | General component diagram | manual | 0.5d | 2014-06-10 | 2014-06-10 | 84 | NamLD | 4h |
| 86 | 1.2.5.3.1.3 | Detail component diagram | manual | 0.5d | 2014-06-10 | 2014-06-10 | 85 | NamLD | 4h |
| 87 | 1.2.5.3.1.4 | Detail Database Design | manual | 1d | 2014-06-11 | 2014-06-11 | 86 | DatPT; NamLD | 16h |
| 88 | 1.2.5.3.2 | **User Interface Design** |  | 14d | 2014-06-11 | 2014-06-30 |  |  | 152h |
| 89 | 1.2.5.3.2.1 | **Phase 1** |  | 8d | 2014-06-11 | 2014-06-20 |  |  | 104h |
| 90 | 1.2.5.3.2.1.1 | Homepage Module | manual | 1d | 2014-06-12 | 2014-06-12 | 87 | NamLD; DatPT | 16h |
| 91 | 1.2.5.3.2.1.2 | **Admin Module** |  | 4d | 2014-06-13 | 2014-06-18 |  |  | 32h |
| 92 | 1.2.5.3.2.1.2.1 | Admin Manage Account Module | manual | 1d | 2014-06-13 | 2014-06-13 | 90 | NamLD | 8h |
| 93 | 1.2.5.3.2.1.2.2 | Member's account management Module | manual | 1d | 2014-06-16 | 2014-06-16 | 92 | NamLD | 8h |
| 94 | 1.2.5.3.2.1.2.3 | Contribute Opinion, Database Management Module | manual | 1d | 2014-06-17 | 2014-06-17 | 93 | NamLD | 8h |
| 95 | 1.2.5.3.2.1.2.4 | Data Management Module | manual | 1d | 2014-06-18 | 2014-06-18 | 94 | NamLD | 8h |
| 96 | 1.2.5.3.2.1.3 | **Search Module** |  | 6d | 2014-06-13 | 2014-06-20 |  |  | 40h |
| 97 | 1.2.5.3.2.1.3.1 | Search Sentences Module | manual | 1d | 2014-06-13 | 2014-06-13 | 90 | DatPT | 8h |
| 98 | 1.2.5.3.2.1.3.2 | Search Conversation Module | manual | 1d | 2014-06-16 | 2014-06-16 | 97 | DatPT | 8h |
| 99 | 1.2.5.3.2.1.3.3 | Search Video Module | manual | 1d | 2014-06-17 | 2014-06-17 | 98 | DatPT | 8h |
| 100 | 1.2.5.3.2.1.3.4 | Search Grammar Module | manual | 1d | 2014-06-18 | 2014-06-18 | 99 | DatPT | 8h |
| 101 | 1.2.5.3.2.1.3.5 | Search Specialized Japanese Module | manual | 1d | 2014-06-19 | 2014-06-19 | 100 | DatPT | 8h |
| 102 | 1.2.5.3.2.1.4 | Login/Logout Module | manual | 0.5d | 2014-06-20 | 2014-06-20 | 101 | DatPT | 4h |
| 103 | 1.2.5.3.2.1.5 | Register Account Module | manual | 0.5d | 2014-06-20 | 2014-06-20 | 102 | DatPT | 4h |
| 104 | 1.2.5.3.2.1.6 | Contribute Opinion, Database Module | manual | 1d | 2014-06-19 | 2014-06-19 | 95 | NamLD | 8h |

| ID | WBS | Task | Type | Duration | Start | Finish | Predecessors | Total slack | Resources | Work |
| --- | --- | --- | --- | --- | --- | --- | --- | --- | --- | --- |
| 105 | 1.2.5.3.2.2 | **Phase 2** |  | 7d | 2014-06-21 | 2014-06-28 |  |  |  | 48h |
| 106 | 1.2.5.3.2.2.1 | Change Password Module | manual | 0.5d | 2014-06-21 | 2014-06-21 | 104 |  | NamLD | 4h |
| 107 | 1.2.5.3.2.2.2 | Forgot Password Module | manual | 0.5d | 2014-06-23 | 2014-06-23 | 106 |  | NamLD | 4h |
| 108 | 1.2.5.3.2.2.3 | Reading Document Module | manual | 1d | 2014-06-23 | 2014-06-23 | 103 |  | DatPT | 8h |
| 109 | 1.2.5.3.2.2.4 | Training Listening Module | manual | 1d | 2014-06-24 | 2014-06-24 | 108 |  | DatPT | 8h |
| 110 | 1.2.5.3.2.2.5 | Listening Conversation Module | manual | 1d | 2014-06-25 | 2014-06-25 | 109 |  | DatPT | 8h |
| 111 | 1.2.5.3.2.2.6 | Doing Test Module | manual | 2d | 2014-06-26 | 2014-06-27 | 110 |  | DatPT | 16h |
| 112 | 1.2.5.4 | Submit report no.4 First version | milestone, manual | 0d | 2014-06-28 | 2014-06-28 | 111 |  | NamLD |  |
| 113 | 1.2.5.5 | Review and update comments report #4 | manual | 1d | 2014-06-30 | 2014-06-30 | 112 |  | NamLD | 8h |
| 114 | 1.2.5.6 | Submit report no.4 final version | milestone, manual | 0d | 2014-07-01 | 2014-07-01 | 113 |  | NamLD |  |
| 115 | 1.3 | **Construction** |  | 35d | 2014-07-01 | 2014-08-18 |  |  |  | 880h |
| 116 | 1.3.1 | **Requirements & Design** |  | 2d | 2014-07-02 | 2014-07-03 |  |  |  | 24h |
| 117 | 1.3.1.1 | Refine requirement documents | manual | 1d | 2014-07-02 | 2014-07-02 | 33 |  | NamLD; MinhPT | 16h |
| 118 | 1.3.1.2 | Refine design documents | manual | 0.5d | 2014-07-03 | 2014-07-03 | 117 |  | DatPT; NamLD | 8h |
| 119 | 1.3.2 | **Coding & Unit Test** |  | 19d | 2014-07-03 | 2014-07-29 |  |  |  | 280h |
| 120 | 1.3.2.1 | **Phase 1** |  | 12.5d | 2014-07-03 | 2014-07-21 |  | 0d |  | 208h |
| 121 | 1.3.2.1.1 | Homepage Module | manual | 1.5d | 2014-07-03 | 2014-07-04 | 118 |  | DatPT; NamLD | 24h |
| 122 | 1.3.2.1.2 | **Admin Module** |  | 10d | 2014-07-05 | 2014-07-17 |  |  |  | 80h |
| 123 | 1.3.2.1.2.1 | Admin Manage Account Module | manual | 2d | 2014-07-05 | 2014-07-07 | 121 |  | NamLD | 16h |
| 124 | 1.3.2.1.2.2 | Member's account management Module | manual | 2d | 2014-07-08 | 2014-07-09 | 123 |  | NamLD | 16h |
| 125 | 1.3.2.1.2.3 | Contribute Opinion, Database Management Module | manual | 1d | 2014-07-10 | 2014-07-10 | 124 |  | NamLD | 8h |
| 126 | 1.3.2.1.2.4 | Data Management Module | manual | 5d | 2014-07-11 | 2014-07-17 | 125 |  | NamLD | 40h |
| 127 | 1.3.2.1.3 | **Search Module** |  | 9d | 2014-07-05 | 2014-07-16 |  |  |  | 72h |
| 128 | 1.3.2.1.3.1 | Search Sentences Module | manual | 2d | 2014-07-05 | 2014-07-07 | 121 |  | DatPT | 16h |
| 129 | 1.3.2.1.3.2 | Search Conversation Module | manual | 2d | 2014-07-08 | 2014-07-09 | 128 |  | DatPT | 16h |
| 130 | 1.3.2.1.3.3 | Search Video Module | manual | 1d | 2014-07-10 | 2014-07-10 | 129 |  | DatPT | 8h |
| 131 | 1.3.2.1.3.4 | Search Grammar Module | manual | 2d | 2014-07-11 | 2014-07-14 | 130 |  | DatPT | 16h |
| 132 | 1.3.2.1.3.5 | Search Specialized Japanese Module | manual | 2d | 2014-07-15 | 2014-07-16 | 131 |  | DatPT | 16h |
| 133 | 1.3.2.1.4 | Login/Logout Module | manual | 1d | 2014-07-18 | 2014-07-18 | 126 |  | NamLD | 8h |
| 134 | 1.3.2.1.5 | Register Account Module | manual | 1d | 2014-07-21 | 2014-07-21 | 133 |  | NamLD | 8h |
| 135 | 1.3.2.1.6 | Contribute Opinion, Database Module | manual | 2d | 2014-07-17 | 2014-07-18 | 132 |  | DatPT | 16h |

| ID | WBS | Task | Type | Duration | Start | Finish | Predecessors | Resources | Work |
| --- | --- | --- | --- | --- | --- | --- | --- | --- | --- |
| 136 | 1.3.2.2 | **Phase 2** |  | 7d | 2014-07-21 | 2014-07-29 |  |  | 72h |
| 137 | 1.3.2.2.1 | Change Password Module | manual | 1d | 2014-07-22 | 2014-07-22 | 134 | NamLD | 8h |
| 138 | 1.3.2.2.2 | Forgot Password Module | manual | 1d | 2014-07-23 | 2014-07-23 | 137 | NamLD | 8h |
| 139 | 1.3.2.2.3 | Reading Document Module | manual | 2d | 2014-07-21 | 2014-07-22 | 135 | DatPT | 16h |
| 140 | 1.3.2.2.4 | Training Listening Module | manual | 1d | 2014-07-23 | 2014-07-23 | 139 | DatPT | 8h |
| 141 | 1.3.2.2.5 | Listening Conversation Module | manual | 1d | 2014-07-24 | 2014-07-24 | 140 | DatPT | 8h |
| 142 | 1.3.2.2.6 | Doing Test Module | manual | 3d | 2014-07-25 | 2014-07-29 | 141 | DatPT | 24h |
| 143 | 1.3.3 | **Testing** |  | 45d | 2014-06-16 | 2014-08-15 |  |  | 544h |
| 144 | 1.3.3.1 | **Create test documents (Report 5)** |  | 26d | 2014-06-16 | 2014-07-19 |  |  | 312h |
| 145 | 1.3.3.1.1 | Create test plan | manual | 6d | 2014-06-16 | 2014-06-23 | 46 | MinhPT; TuanNN | 96h |
| 146 | 1.3.3.1.2 | Review and update Test Plan | manual | 1d | 2014-06-24 | 2014-06-24 | 145 | MinhPT; TuanNN | 16h |
| 147 | 1.3.3.1.3 | **Create test cases** |  | 13d | 2014-06-25 | 2014-07-11 |  |  | 160h |
| 148 | 1.3.3.1.3.1 | Create Unit Test Case | manual | 7d | 2014-06-25 | 2014-07-03 | 146 | MinhPT; TuanNN | 112h |
| 149 | 1.3.3.1.3.2 | Create Integration Test Case | manual | 2d | 2014-07-04 | 2014-07-07 | 148 | MinhPT; TuanNN | 32h |
| 150 | 1.3.3.1.3.3 | Create System Test Case | manual | 1d | 2014-07-08 | 2014-07-08 | 149 | MinhPT; TuanNN | 16h |
| 151 | 1.3.3.1.4 | Create test checklist | manual | 2d | 2014-07-09 | 2014-07-10 | 150 | TuanNN | 16h |
| 152 | 1.3.3.1.5 | Review test documents | manual | 1d | 2014-07-11 | 2014-07-11 | 151 | MinhPT | 8h |
| 153 | 1.3.3.1.6 | Submit report no.5 First version | milestone, manual | 0d | 2014-07-14 | 2014-07-14 | 152 | NamLD |  |
| 154 | 1.3.3.1.7 | Review report no.5 | manual | 1d | 2014-07-15 | 2014-07-15 | 153 | MinhPT; NamLD | 16h |
| 155 | 1.3.3.1.8 | Submit report no.5 final version | milestone, manual | 0d | 2014-07-16 | 2014-07-16 | 154 | NamLD |  |
| 156 | 1.3.3.2 | **Execute test** |  | 15d | 2014-07-21 | 2014-08-08 |  |  | 232h |
| 157 | 1.3.3.2.1 | **Execute Test Phase 1** |  | 8d | 2014-07-21 | 2014-07-30 |  |  | 128h |
| 158 | 1.3.3.2.1.1 | Execute Unit Test | manual | 5d | 2014-07-21 | 2014-07-25 | 155 | MinhPT; TuanNN | 80h |
| 159 | 1.3.3.2.1.2 | Fix bug Unit Test | manual | 1d | 2014-07-28 | 2014-07-28 | 158 | DatPT; NamLD | 16h |
| 160 | 1.3.3.2.1.3 | Execute Integration Test | manual | 1d | 2014-07-29 | 2014-07-29 | 159 | MinhPT; TuanNN | 16h |
| 161 | 1.3.3.2.1.4 | Fix bug Integration Test | manual | 1d | 2014-07-30 | 2014-07-30 | 160 | DatPT; NamLD | 16h |

| ID | WBS | Task | Type | Duration | Start | Finish | Predecessors | Resources | Work |
| --- | --- | --- | --- | --- | --- | --- | --- | --- | --- |
| 162 | 1.3.3.2.2 | **Execute Test Phase 2** |  | 8d | 2014-07-30 | 2014-08-08 |  |  | 104h |
| 163 | 1.3.3.2.2.1 | Execute Unit Test | manual | 4d | 2014-07-31 | 2014-08-05 | 161 | MinhPT; TuanNN | 64h |
| 164 | 1.3.3.2.2.2 | Fix bug Unit Test | manual | 1d | 2014-08-06 | 2014-08-06 | 163 | DatPT; NamLD | 16h |
| 165 | 1.3.3.2.2.3 | Execute Integration Test | manual | 1d | 2014-08-07 | 2014-08-07 | 164 | MinhPT; TuanNN | 16h |
| 166 | 1.3.3.2.2.4 | Fix bug Integration Test | manual | 0.5d | 2014-08-08 | 2014-08-08 | 165 |  |  |
| 167 | 1.3.3.2.2.5 | Execute System Test | manual | 0.5d | 2014-08-08 | 2014-08-08 | 166 | MinhPT; TuanNN | 8h |
| 168 | 1.3.4 | Create report no.6 -Software User's Manual | manual | 3d | 2014-08-11 | 2014-08-13 | 167 | NamLD | 24h |
| 169 | 1.3.5 | Submit report no.6 First version | milestone, manual | 0d | 2014-08-14 | 2014-08-14 | 168 | NamLD |  |
| 170 | 1.3.6 | Review & update report no.6 | manual | 1d | 2014-08-14 | 2014-08-14 | 169 | NamLD | 8h |
| 171 | 1.3.7 | Submit report no.6 final version | milestone, manual | 0d | 2014-08-15 | 2014-08-15 | 170 | NamLD |  |
| 172 | 1.4 | **Transition** |  | 9d | 2014-08-15 | 2014-08-27 |  |  | 80h |
| 173 | 1.4.1 | **Preclosing** |  | 8d | 2014-08-15 | 2014-08-26 |  |  | 48h |
| 174 | 1.4.1.1 | Conduct project review-lessons learned | manual | 2d | 2014-08-15 | 2014-08-17 | 171 | Project Team | 16h |
| 175 | 1.4.1.2 | Complete program and documents | manual | 4d | 2014-08-18 | 2014-08-21 | 174 | Project Team | 32h |
| 176 | 1.4.1.3 | Submit the last document and CD source code | milestone, manual | 0d | 2014-08-22 | 2014-08-22 | 175 | Project Team |  |
| 177 | 1.4.2 | **Closing** |  | 4d | 2014-08-24 | 2014-08-27 |  |  | 32h |
| 178 | 1.4.2.1 | Prepare for presentation | manual | 2d | 2014-08-22 | 2014-08-24 | 176 | Project Team | 16h |
| 179 | 1.4.2.2 | Represent capstone project | manual | 2d | 2014-08-25 | 2014-08-26 | 178 | Project Team | 16h |
| 180 | 1.4.2.3 | Project completed | milestone, manual | 0d | 2014-08-27 | 2014-08-27 | 179 | Project Team |  |
